# WBSTool Project

Schedule from ProjectLibre, 2019-01-01 to 2019-05-02.

## Calendars

- Standard: Mon-Fri 08:00-12:00, 13:00-17:00; Sat-Sun off.

## Resources

| Resource | Rate |
| --- | --- |
| No Asignado |  |
| Programador Junior1 | 12.5 |
| Programador Junior2 | 12.5 |
| Analista-Diseñador | 15 |
| Analista-Programador | 15 |
| Programador Senior | 18 |
| Director de proyecto | 22 |
| Personal de empresa |  |

## Schedule

| ID | WBS | Task | Duration | Start | Finish | Predecessors | Constraint | Resources |
| --- | --- | --- | --- | --- | --- | --- | --- | --- |
| 1 | 1 | **Proyecto de sistema para bar tecnológico** | 87.55d | 2019-01-01 09:00 | 2019-05-02 14:24 |  | start no earlier than 2019-01-01 08:00 |  |
| 2 | 1.1 | **Tareas de Gestión** | 85.09d | 2019-01-01 09:00 | 2019-04-30 09:44 |  |  |  |
| 3 | 1.1.1 | **Tareas de riesgos** | 64.03d | 2019-01-01 09:00 | 2019-04-01 09:14 |  |  |  |
| 4 | 1.1.1.1 | Control de riesgos y daños 1 | 0.03d | 2019-02-01 09:00 | 2019-02-01 09:14 |  | start no earlier than 2019-02-01 09:00 | Director de proyecto [50%]; Personal de empresa |
| 5 | 1.1.1.2 | Control de riesgos y daños 2 | 0.03d | 2019-03-01 09:00 | 2019-03-01 09:14 |  | start no earlier than 2019-03-01 09:00 | Director de proyecto [50%]; Personal de empresa |
| 6 | 1.1.1.3 | Control de riesgos y daños 3 | 0.03d | 2019-04-01 09:00 | 2019-04-01 09:14 |  | start no earlier than 2019-04-01 09:00 | Director de proyecto [50%]; Personal de empresa |
| 7 | 1.1.1.4 | **Respuestas iniciales a riesgos** | 3d | 2019-01-01 09:00 | 2019-01-04 09:00 |  |  |  |
| 8 | 1.1.1.4.1 | Crear Plan de incentivos | 0.06d | 2019-01-01 09:14 | 2019-01-01 09:44 | 14 | start no earlier than 2019-01-01 09:00 | Director de proyecto [50%] |
| 9 | 1.1.1.4.2 | Plan de comportamiento | 0.06d | 2019-01-01 09:00 | 2019-01-01 09:29 | 8 |  | Director de proyecto [50%] |
| 10 | 1.1.1.4.3 | Crear plan de errores y problemas | 0.25d | 2019-01-01 09:29 | 2019-01-01 11:29 | 9 |  | Director de proyecto [50%]; Analista-Programador [50%] |
| 11 | 1.1.1.4.4 | Formación de empleados | 3d | 2019-01-01 09:00 | 2019-01-04 09:00 |  |  | Programador Junior1; Programador Senior |
| 12 | 1.1.2 | **Tareas de comunicación** | 85.06d | 2019-01-01 09:00 | 2019-04-30 09:29 |  |  |  |
| 13 | 1.1.2.1 | **Reuniones equipo** | 85.03d | 2019-01-01 09:00 | 2019-04-30 09:14 |  |  |  |
| 14 | 1.1.2.1.1 | Reunión equipo 1 | 0.03d | 2019-01-01 09:00 | 2019-01-01 09:14 |  |  | Analista-Diseñador; Analista-Programador; Director de proyecto |
| 15 | 1.1.2.1.2 | Reunión equipo 2 | 0.03d | 2019-01-08 09:00 | 2019-01-08 09:14 | 63 | start no earlier than 2019-01-08 09:00 | Analista-Diseñador; Analista-Programador; Director de proyecto |
| 16 | 1.1.2.1.3 | Reunión equipo 3 | 0.03d | 2019-01-15 09:00 | 2019-01-15 09:14 |  | start no earlier than 2019-01-15 09:00 | Analista-Diseñador; Analista-Programador; Director de proyecto |
| 17 | 1.1.2.1.4 | Reunión equipo 4 | 0.03d | 2019-01-22 09:14 | 2019-01-22 09:29 | 97 | start no earlier than 2019-01-22 09:00 | Analista-Diseñador; Analista-Programador; Director de proyecto |
| 18 | 1.1.2.1.5 | Reunión equipo 5 | 0.03d | 2019-01-29 09:00 | 2019-01-29 09:14 |  | start no earlier than 2019-01-29 09:00 | Analista-Diseñador; Analista-Programador; Director de proyecto |
| 19 | 1.1.2.1.6 | Reunión equipo 6 | 0.03d | 2019-02-05 09:00 | 2019-02-05 09:14 | 159 | start no earlier than 2019-02-05 09:00 | Analista-Diseñador; Analista-Programador; Director de proyecto |
| 20 | 1.1.2.1.7 | Reunión equipo 7 | 0.03d | 2019-02-12 09:00 | 2019-02-12 09:14 | 170 | start no earlier than 2019-02-12 09:00 | Programador Junior1; Programador Junior2; Analista-Programador; Programador Senior; Director de proyecto |
| 21 | 1.1.2.1.8 | Reunión equipo 8 | 0.03d | 2019-02-19 09:00 | 2019-02-19 09:14 | 181 | start no earlier than 2019-02-19 09:00 | Programador Junior1; Programador Junior2; Analista-Programador; Programador Senior; Director de proyecto |
| 22 | 1.1.2.1.9 | Reunión equipo 9 | 0.03d | 2019-02-26 09:00 | 2019-02-26 09:14 |  | start no earlier than 2019-02-26 09:00 | Programador Junior1; Programador Junior2; Analista-Programador; Programador Senior; Director de proyecto |
| 23 | 1.1.2.1.10 | Reunión equipo 10 | 0.03d | 2019-03-05 11:45 | 2019-03-05 13:00 | 218 | start no earlier than 2019-03-05 09:00 | Programador Junior1; Programador Junior2; Analista-Programador; Programador Senior; Director de proyecto |
| 24 | 1.1.2.1.11 | Reunión equipo 11 | 0.03d | 2019-03-12 09:00 | 2019-03-12 09:14 |  | start no earlier than 2019-03-12 09:00 | Programador Junior1; Programador Junior2; Analista-Programador; Programador Senior; Director de proyecto |
| 25 | 1.1.2.1.12 | Reunion equipo 12 | 0.03d | 2019-03-19 14:14 | 2019-03-19 14:29 | 249 | start no earlier than 2019-03-19 09:00 | Programador Junior1; Programador Junior2; Analista-Programador; Programador Senior; Director de proyecto |
| 26 | 1.1.2.1.13 | Reunión equipo 13 | 0.03d | 2019-03-26 09:00 | 2019-03-26 09:14 |  | start no earlier than 2019-03-26 09:00 | Programador Junior1; Programador Junior2; Analista-Programador; Programador Senior; Director de proyecto |
| 27 | 1.1.2.1.14 | Reunión equipo 14 | 0.03d | 2019-04-02 14:14 | 2019-04-02 14:29 | 287 | start no earlier than 2019-04-02 09:00 | Programador Junior1; Programador Junior2; Analista-Programador; Programador Senior; Director de proyecto |
| 28 | 1.1.2.1.15 | Reunión equipo 15 | 0.03d | 2019-04-10 10:59 | 2019-04-10 11:14 | 330 | start no earlier than 2019-04-09 09:00 | Programador Junior1; Programador Junior2; Analista-Programador; Programador Senior; Director de proyecto |
| 29 | 1.1.2.1.16 | Reunión equipo 16 | 0.03d | 2019-04-16 11:14 | 2019-04-16 11:29 | 370 | start no earlier than 2019-04-16 09:00 | Programador Junior1; Programador Junior2; Analista-Programador; Programador Senior; Director de proyecto |
| 30 | 1.1.2.1.17 | Reunión de equipo 17 | 0.03d | 2019-04-23 11:14 | 2019-04-23 11:29 | 383 | start no earlier than 2019-04-23 09:00 | Programador Junior1; Programador Junior2; Analista-Programador; Programador Senior; Director de proyecto |
| 31 | 1.1.2.1.18 | Reunión de equipo 18 | 0.03d | 2019-04-30 09:00 | 2019-04-30 09:14 |  | start no earlier than 2019-04-30 09:00 | Programador Junior1; Programador Junior2; Analista-Programador; Programador Senior; Director de proyecto |

| ID | WBS | Task | Duration | Start | Finish | Predecessors | Constraint | Resources |
| --- | --- | --- | --- | --- | --- | --- | --- | --- |
| 32 | 1.1.2.2 | **Reuniones clientes** | 64.06d | 2019-01-30 09:00 | 2019-04-30 09:29 |  |  |  |
| 33 | 1.1.2.2.1 | Reunión cliente 1 | 0.03d | 2019-01-30 09:00 | 2019-01-30 09:14 |  | start no earlier than 2019-01-30 09:00 | Analista-Diseñador |
| 34 | 1.1.2.2.2 | Reunión cliente 2 | 0.03d | 2019-02-28 09:00 | 2019-02-28 09:14 | 197 | start no earlier than 2019-02-28 09:00 | Analista-Diseñador |
| 35 | 1.1.2.2.3 | Reunión cliente 3 | 0.03d | 2019-03-30 09:00 | 2019-04-01 08:14 |  | start no earlier than 2019-03-30 09:00 | Analista-Diseñador |
| 36 | 1.1.2.2.4 | Reunión cliente 4 | 0.03d | 2019-04-30 09:14 | 2019-04-30 09:29 | 31 | start no earlier than 2019-04-30 09:00 | Analista-Diseñador |
| 37 | 1.1.3 | **Tareas de gestión de Costes** | 75.06d | 2019-01-15 09:14 | 2019-04-30 09:44 |  |  |  |
| 38 | 1.1.3.1 | Control de costes 1 | 0.03d | 2019-01-15 09:14 | 2019-01-15 09:29 | 16 | start no earlier than 2019-01-15 09:00 | Director de proyecto [50%] |
| 39 | 1.1.3.2 | Control de costes 2 | 0.03d | 2019-01-30 09:00 | 2019-01-30 09:14 |  | start no earlier than 2019-01-30 09:00 | Director de proyecto [50%] |
| 40 | 1.1.3.3 | Control de costes 3 | 0.03d | 2019-02-15 09:00 | 2019-02-15 09:14 |  | start no earlier than 2019-02-15 09:00 | Director de proyecto [50%] |
| 41 | 1.1.3.4 | Control de costes 4 | 0.03d | 2019-03-02 09:00 | 2019-03-04 08:14 |  | start no earlier than 2019-03-02 09:00 | Director de proyecto [50%] |
| 42 | 1.1.3.5 | Control de costes 5 | 0.03d | 2019-03-16 09:00 | 2019-03-18 08:14 |  | start no earlier than 2019-03-16 09:00 | Director de proyecto [50%] |
| 43 | 1.1.3.6 | Control de costes 6 | 0.03d | 2019-04-01 09:14 | 2019-04-01 09:29 | 6 | start no earlier than 2019-03-30 09:00 | Director de proyecto [50%] |
| 44 | 1.1.3.7 | Control de costes 7 | 0.03d | 2019-04-15 09:00 | 2019-04-15 09:14 |  | start no earlier than 2019-04-15 09:00 | Director de proyecto [50%] |
| 45 | 1.1.3.8 | Control de costes 8 | 0.03d | 2019-04-30 09:29 | 2019-04-30 09:44 | 36 | start no earlier than 2019-04-30 09:00 | Director de proyecto [50%] |
| 46 | 1.1.3.9 | Informe de costes 1 | 0.03d | 2019-01-15 09:14 | 2019-01-15 09:29 | 16 | start no earlier than 2019-01-15 09:00 | Director de proyecto [50%] |
| 47 | 1.1.3.10 | Informe de costes 2 | 0.03d | 2019-01-30 09:00 | 2019-01-30 09:14 |  | start no earlier than 2019-01-30 09:00 | Director de proyecto [50%] |
| 48 | 1.1.3.11 | Informe de costes 3 | 0.03d | 2019-02-15 09:00 | 2019-02-15 09:14 |  | start no earlier than 2019-02-15 09:00 | Director de proyecto [50%] |
| 49 | 1.1.3.12 | Informe de costes 4 | 0.03d | 2019-03-02 09:00 | 2019-03-04 08:14 |  | start no earlier than 2019-03-02 09:00 | Director de proyecto [50%] |
| 50 | 1.1.3.13 | Informe de costes 5 | 0.03d | 2019-03-16 09:00 | 2019-03-18 08:14 |  | start no earlier than 2019-03-16 09:00 | Director de proyecto [50%] |
| 51 | 1.1.3.14 | Informe de costes 6 | 0.03d | 2019-04-01 09:14 | 2019-04-01 09:29 | 6 | start no earlier than 2019-03-30 09:00 | Director de proyecto [50%] |
| 52 | 1.1.3.15 | Informe de costes 7 | 0.03d | 2019-04-15 09:00 | 2019-04-15 09:14 |  | start no earlier than 2019-04-15 09:00 | Director de proyecto [50%] |
| 53 | 1.1.3.16 | Informe de costes 8 | 0.03d | 2019-04-30 09:29 | 2019-04-30 09:44 | 36 | start no earlier than 2019-04-30 09:00 | Director de proyecto [50%] |
| 54 | 1.1 | **Análisis de requisitos del sistema** | 19.62d | 2019-01-01 11:29 | 2019-01-29 08:29 | 10 |  |  |
| 55 | 1.1.1 | **Identificación de las necesidades del cliente** | 4.1d | 2019-01-01 11:29 | 2019-01-07 13:17 |  |  |  |
| 56 | 1.1.1.1 | **Especificación informal del sistema** | 4.1d | 2019-01-01 11:29 | 2019-01-07 13:17 |  |  |  |
| 57 | 1.1.1.1.1 | **Técnica de obtención de requisitos** | 3d | 2019-01-01 11:29 | 2019-01-04 11:29 |  |  |  |
| 58 | 1.2.1.1.1.1 | Preparar preguntas y temáticas para entrevista inicial | 0.5d | 2019-01-01 11:29 | 2019-01-01 16:29 |  |  | Analista-Diseñador |
| 59 | 1.2.1.1.1.2 | Entrevistar jefe de proyecto | 0.5d | 2019-01-01 16:29 | 2019-01-02 11:29 | 58 |  | Analista-Diseñador; Director de proyecto |
| 60 | 1.2.1.1.1.3 | Cuestionar futuros empleados para conocer sus necesidades | 1d | 2019-01-02 11:29 | 2019-01-03 11:29 | 59 |  | Analista-Diseñador |
| 61 | 1.2.1.1.1.4 | Cuestionar posibles clientes para conocer sus preferencias | 1d | 2019-01-03 11:29 | 2019-01-04 11:29 | 60 |  | Analista-Diseñador |

| ID | WBS | Task | Duration | Start | Finish | Predecessors | Constraint | Resources |
| --- | --- | --- | --- | --- | --- | --- | --- | --- |
| 62 | 1.1.1.2 | **Determinación informal de aspectos del sistema** | 1.1d | 2019-01-04 11:29 | 2019-01-07 13:17 | 57 |  |  |
| 63 | 1.2.1.1.2.1 | Determinar necesidades de jefe de proyectos | 0.5d | 2019-01-04 11:29 | 2019-01-04 16:29 |  |  | Analista-Diseñador; Director de proyecto |
| 64 | 1.1.1.2.1 | **Determinación informal de funciones** | 0.6d | 2019-01-04 16:29 | 2019-01-07 13:17 | 63 |  |  |
| 65 | 1.2.1.1.2.2.1 | Cuestionar futuros empleados para conocer sus necesidades | 0.1d | 2019-01-04 16:29 | 2019-01-07 08:17 | 15 |  | Analista-Diseñador |
| 66 | 1.2.1.1.2.2.2 | Cuestionar posibles clientes para conocer sus preferencias | 0.1d | 2019-01-07 11:29 | 2019-01-07 13:17 | 77 | start no earlier than 2019-01-04 11:12 | Analista-Diseñador |
| 67 | 1.1.1.2.2 | **Determinación informal de información manejada** | 0.2d | 2019-01-04 16:29 | 2019-01-07 09:05 | 63 |  |  |
| 68 | 1.2.1.1.2.3.1 | Cuestionar futuros empleados para conocer sus necesidades | 0.1d | 2019-01-07 08:17 | 2019-01-07 09:05 | 65 |  | Analista-Diseñador |
| 69 | 1.2.1.1.2.3.2 | Cuestionar posibles clientes para conocer sus preferencias | 0.1d | 2019-01-04 16:29 | 2019-01-07 08:17 | 66 |  | Analista-Diseñador |
| 70 | 1.1.1.2.3 | **Determinación informal de interfaces del sistema** | 0.2d | 2019-01-07 08:17 | 2019-01-07 09:53 | 63 |  |  |
| 71 | 1.2.1.1.2.4.1 | Cuestionar futuros empleados para conocer sus necesidades | 0.1d | 2019-01-07 09:05 | 2019-01-07 09:53 | 68 |  | Analista-Diseñador |
| 72 | 1.2.1.1.2.4.2 | Cuestionar posibles clientes para conocer sus preferencias | 0.1d | 2019-01-07 08:17 | 2019-01-07 09:05 | 69 |  | Analista-Diseñador |
| 73 | 1.1.1.2.4 | **Determinación informal de rendimiento del sistema** | 0.2d | 2019-01-07 09:05 | 2019-01-07 10:41 | 63 |  |  |
| 74 | 1.2.1.1.2.5.1 | Cuestionar futuros empleados para conocer sus necesidades | 0.1d | 2019-01-07 09:53 | 2019-01-07 10:41 | 71 |  | Analista-Diseñador |
| 75 | 1.2.1.1.2.5.2 | Cuestionar posibles clientes para conocer sus preferencias | 0.1d | 2019-01-07 09:05 | 2019-01-07 09:53 | 72 |  | Analista-Diseñador |
| 76 | 1.1.1.2.5 | **Determinación informal de las restricciones del sistema** | 0.2d | 2019-01-07 09:53 | 2019-01-07 11:29 | 63 |  |  |
| 77 | 1.2.1.1.2.6.1 | Cuestionar futuros empleados para conocer sus necesidades | 0.1d | 2019-01-07 10:41 | 2019-01-07 11:29 | 74 |  | Analista-Diseñador |
| 78 | 1.2.1.1.2.6.2 | Cuestionar posibles clientes para conocer sus preferencias | 0.1d | 2019-01-07 09:53 | 2019-01-07 10:41 | 75 |  | Analista-Diseñador |
| 79 | 1.1.2 | **Asignación de funciones a cada elemento del sistema** | 6.99d | 2019-01-07 13:17 | 2019-01-16 13:14 | 55 |  |  |
| 80 | 1.1.2.1 | **Alternativas de creación del sistema** | 2.5d | 2019-01-07 13:17 | 2019-01-10 08:17 |  |  |  |
| 81 | 1.2.2.1.1 | Buscar tecnologías y metodologías alternativas | 2.5d | 2019-01-07 13:17 | 2019-01-10 08:17 |  |  | Analista-Diseñador |
| 82 | 1.2.2.2 | Informar del progreso de la semana al Jefe de proyecto | 0.12d | 2019-01-10 08:17 | 2019-01-10 09:17 | 80 |  | Analista-Diseñador; Director de proyecto |
| 83 | 1.1.2.2 | **Validación de las alternativas de creación del sistema** | 4.37d | 2019-01-10 09:17 | 2019-01-16 13:14 | 82 |  |  |
| 84 | 1.2.2.3.1 | Analizar las alternativas obtenidas | 1d | 2019-01-10 09:17 | 2019-01-11 09:17 |  |  | Analista-Diseñador |
| 85 | 1.2.2.3.2 | Comparar las alternativas con la propuesta original | 1d | 2019-01-15 09:14 | 2019-01-16 09:14 | 16, 84 |  | Analista-Diseñador |
| 86 | 1.2.2.3.3 | Decidir finalmente que tecnología usar | 0.25d | 2019-01-16 09:14 | 2019-01-16 11:14 | 85 |  | Analista-Diseñador |
| 87 | 1.2.2.3.4 | Informar al Jefe del progreso de la semana | 0.12d | 2019-01-16 11:14 | 2019-01-16 13:14 | 86 |  | Analista-Diseñador; Director de proyecto |

| ID | WBS | Task | Duration | Start | Finish | Predecessors | Resources |
| --- | --- | --- | --- | --- | --- | --- | --- |
| 88 | 1.1.3 | **Evaluación de la viabilidad del sistema** | 7.53d | 2019-01-16 13:14 | 2019-01-28 08:29 | 79 |  |
| 89 | 1.1.3.1 | **Estudio de viabilidad económico** | 2.5d | 2019-01-16 13:14 | 2019-01-21 08:14 |  |  |
| 90 | 1.2.3.1.1 | Realizar análisis de costes económicos | 0.62d | 2019-01-16 13:14 | 2019-01-17 09:14 |  | Analista-Diseñador |
| 91 | 1.2.3.1.2 | Realizar análisis de mercado | 0.62d | 2019-01-17 09:14 | 2019-01-17 15:14 | 90 | Analista-Diseñador |
| 92 | 1.2.3.1.3 | Realizar estimaciones coste-beneficio y tiempo-beneficio | 0.62d | 2019-01-17 15:14 | 2019-01-18 11:14 | 91 | Analista-Diseñador |
| 93 | 1.2.3.1.4 | Reunirse con el jefe para decidir su el proyecto se considera viable | 0.62d | 2019-01-18 11:14 | 2019-01-21 08:14 | 92 | Analista-Diseñador |
| 94 | 1.1.3.2 | **Estudio de viabilidad técnico** | 1.78d | 2019-01-21 08:14 | 2019-01-22 15:29 | 89 |  |
| 95 | 1.2.3.2.1 | Estudiar las tecnologías disponibles para el proyecto | 0.62d | 2019-01-21 08:14 | 2019-01-21 14:14 |  | Analista-Programador |
| 96 | 1.2.3.2.2 | Analizar recursos y tecnologías a las que tiene acceso la empresa | 0.25d | 2019-01-21 14:14 | 2019-01-21 16:14 | 95 | Analista-Programador |
| 97 | 1.2.3.2.3 | Analizar recursos y tecnologías de terceros que podrían comprarse o contratarse | 0.25d | 2019-01-21 16:14 | 2019-01-22 09:14 | 96 | Analista-Programador |
| 98 | 1.2.3.2.4 | Analizar con la información obtenida si el proyecto es viable | 0.62d | 2019-01-22 09:29 | 2019-01-22 15:29 | 17, 97 | Analista-Programador |
| 99 | 1.1.3.3 | **Estudio de viabilidad legal** | 2d | 2019-01-22 15:29 | 2019-01-24 15:29 | 94 |  |
| 100 | 1.2.3.3.1 | Estudiar las leyes relacionadas con la parte tecnológica del proyecto | 0.5d | 2019-01-22 15:29 | 2019-01-23 10:29 |  | Director de proyecto |
| 101 | 1.2.3.3.2 | Estudiar las leyes relacionadas con al parte de hostelería del proyecto | 0.5d | 2019-01-23 10:29 | 2019-01-23 15:29 | 100 | Director de proyecto |
| 102 | 1.2.3.3.3 | Estudiar las leyes relacionadas con salud e higiene de local | 0.5d | 2019-01-23 15:29 | 2019-01-24 10:29 | 101 | Director de proyecto |
| 103 | 1.2.3.3.4 | Realizar un informe sobre los estudios legales | 0.38d | 2019-01-24 10:29 | 2019-01-24 14:29 | 102 | Director de proyecto |
| 104 | 1.2.3.3.5 | Analizar con la información obtenida si el proyecto es legalmente viable | 0.12d | 2019-01-24 14:29 | 2019-01-24 15:29 | 103 | Director de proyecto |
| 105 | 1.1.3.4 | **Estudio de viabilidad de plazos** | 1.25d | 2019-01-24 15:29 | 2019-01-28 08:29 | 99 |  |
| 106 | 1.2.3.4.1 | Realizar análisis de costes temporales | 1d | 2019-01-24 15:29 | 2019-01-25 15:29 |  | Analista-Diseñador |
| 107 | 1.2.3.4.2 | Realizar planificación de distribución de trabajo | 0.25d | 2019-01-24 15:29 | 2019-01-25 08:29 |  | Analista-Diseñador |
| 108 | 1.2.3.4.3 | Determinar si el proyecto es viable en el tiempo elegido | 0.25d | 2019-01-25 15:29 | 2019-01-28 08:29 | 107, 106 | Analista-Diseñador |
| 109 | 1.1.4 | **Obtención de una definición del sistema** | 1d | 2019-01-28 08:29 | 2019-01-29 08:29 | 88 |  |
| 110 | 1.1.4.1 | **Especificación formal del sistema** | 0.4d | 2019-01-28 08:29 | 2019-01-28 11:41 |  |  |
| 111 | 1.1.4.1.1 | **Diagrama de contexto** | 0.2d | 2019-01-28 08:29 | 2019-01-28 10:05 |  |  |
| 112 | 1.2.4.1.1.1 | Dibujar el diagrama de contexto | 0.2d | 2019-01-28 08:29 | 2019-01-28 10:05 |  | Analista-Programador |

| ID | WBS | Task | Duration | Start | Finish | Predecessors | Resources |
| --- | --- | --- | --- | --- | --- | --- | --- |
| 113 | 1.1.4.1.2 | **Diagrama de sistema** | 0.2d | 2019-01-28 10:05 | 2019-01-28 11:41 | 111 |  |
| 114 | 1.2.4.1.2.1 | Dibujar el diagrama de sistema | 0.2d | 2019-01-28 10:05 | 2019-01-28 11:41 |  | Analista-Programador |
| 115 | 1.1.4.2 | **Representación del sistema** | 0.6d | 2019-01-28 11:41 | 2019-01-29 08:29 | 110 |  |
| 116 | 1.1.4.2.1 | **Diagramas de flujo de datos** | 0.2d | 2019-01-28 11:41 | 2019-01-28 14:17 |  |  |
| 117 | 1.2.4.2.1.1 | Dibujar el diagrama de sistema | 0.2d | 2019-01-28 11:41 | 2019-01-28 14:17 |  | Analista-Diseñador |
| 118 | 1.1.4.2.2 | **Diagramas de flujo de control** | 0.2d | 2019-01-28 14:17 | 2019-01-28 15:53 | 116 |  |
| 119 | 1.2.4.2.2.1 | Dibujar el diagrama de sistema | 0.2d | 2019-01-28 14:17 | 2019-01-28 15:53 |  | Analista-Diseñador |
| 120 | 1.1.4.2.3 | **Diagramas del ámbito de la información** | 0.2d | 2019-01-28 15:53 | 2019-01-29 08:29 | 118 |  |
| 121 | 1.2.4.2.3.1 | Dibujar el diagrama de sistema | 0.2d | 2019-01-28 15:53 | 2019-01-29 08:29 |  | Analista-Diseñador |
| 122 | 1.2 | **Análisis de requisitos del software** | 2.75d | 2019-01-30 09:14 | 2019-02-01 16:14 | 54 |  |
| 123 | 1.2.1 | **Extracción o determinación de requisitos** | 0.5d | 2019-01-30 09:14 | 2019-01-30 14:14 |  |  |
| 124 | 1.2.1.1 | **Documentos de reuniones con cliente** | 0.25d | 2019-01-30 09:14 | 2019-01-30 11:14 |  |  |
| 125 | 1.3.1.1.1 | Realizar un acta de reunión para la reunión con el cliente | 0.12d | 2019-01-30 09:14 | 2019-01-30 10:14 | 18, 33 | Analista-Diseñador |
| 126 | 1.3.1.1.2 | Realizar un informe sobre las solicitudes e información que se obtuvo del cliente | 0.12d | 2019-01-30 10:14 | 2019-01-30 11:14 | 125 | Analista-Diseñador; Analista-Programador |
| 127 | 1.2.1.2 | **Especificación informal de requisitos software** | 0.25d | 2019-01-30 11:14 | 2019-01-30 14:14 | 124 |  |
| 128 | 1.3.1.2.1 | Redactar un primer informe de los requisitos del software a partir del informe de reunión con el cliente | 0.25d | 2019-01-30 11:14 | 2019-01-30 14:14 |  | Analista-Diseñador; Analista-Programador |
| 129 | 1.2.2 | **Análisis de requisitos** | 0.75d | 2019-01-30 14:14 | 2019-01-31 11:14 | 123 |  |
| 130 | 1.2.2.1 | **Validación de especificación informal** | 0.12d | 2019-01-30 14:14 | 2019-01-30 15:14 |  |  |
| 131 | 1.3.2.1.1 | Analizar especificación informal para posibles mejoras | 0.12d | 2019-01-30 14:14 | 2019-01-30 15:14 |  | Analista-Diseñador |
| 132 | 1.3.2.1.2 | Buscar errores en la especificación informal | 0.12d | 2019-01-30 14:14 | 2019-01-30 15:14 |  | Analista-Programador |
| 133 | 1.2.2.2 | **Resolución de inconsistencias** | 0.25d | 2019-01-30 15:14 | 2019-01-31 08:14 | 130 |  |
| 134 | 1.3.2.2.1 | Corregir errores en la especificación informal | 0.25d | 2019-01-30 15:14 | 2019-01-31 08:14 |  | Analista-Programador |
| 135 | 1.3.2.2.2 | Encontrar redundancias y discrepancias en la especificación informal | 0.25d | 2019-01-30 15:14 | 2019-01-31 08:14 |  | Analista-Diseñador |
| 136 | 1.2.2.3 | **Coordinación de requisitos relacionados** | 0.38d | 2019-01-31 08:14 | 2019-01-31 11:14 | 133 |  |
| 137 | 1.3.2.3.1 | Formar relaciones entre requisitos que tengan puntos comunes | 0.25d | 2019-01-31 08:14 | 2019-01-31 10:14 |  | Analista-Diseñador; Analista-Programador |
| 138 | 1.3.2.3.2 | Purgar relaciones redundantes | 0.12d | 2019-01-31 10:14 | 2019-01-31 11:14 | 137 | Analista-Diseñador; Analista-Programador |

| ID | WBS | Task | Duration | Start | Finish | Predecessors | Resources |
| --- | --- | --- | --- | --- | --- | --- | --- |
| 139 | 1.2.3 | **Especificación de requisitos** | 0.75d | 2019-01-31 11:14 | 2019-02-01 09:14 | 129 |  |
| 140 | 1.2.3.1 | **Documento de especificación formal de requisitos** | 0.5d | 2019-01-31 11:14 | 2019-01-31 16:14 |  |  |
| 141 | 1.3.3.1.1 | Redactar documento de requisitos formal | 0.5d | 2019-01-31 11:14 | 2019-01-31 16:14 |  | Analista-Programador |
| 142 | 1.2.3.2 | **Revisión de documento de especificación formal** | 0.25d | 2019-01-31 16:14 | 2019-02-01 09:14 | 140 |  |
| 143 | 1.3.3.2.1 | Revisar documento de requisitos formal en busca de errores | 0.12d | 2019-01-31 16:14 | 2019-02-01 08:14 |  | Analista-Diseñador |
| 144 | 1.3.3.2.2 | Revisar documento de requisitos formal en busca de mejoras de formato y claridad | 0.12d | 2019-02-01 08:14 | 2019-02-01 09:14 | 143 | Analista-Diseñador |
| 145 | 1.2.4 | **Validación de requisitos** | 0.75d | 2019-02-01 09:14 | 2019-02-01 16:14 | 139 |  |
| 146 | 1.2.4.1 | **Reunión con cliente para validación de requisitos** | 0.25d | 2019-02-01 09:14 | 2019-02-01 11:14 |  |  |
| 147 | 1.3.4.1.1 | Redactar acta de reunión con el cliente y validar requisitos | 0.25d | 2019-02-01 09:14 | 2019-02-01 11:14 |  | Analista-Diseñador |
| 148 | 1.2.4.2 | **Corrección de especificación formal** | 0.25d | 2019-02-01 11:14 | 2019-02-01 14:14 | 146 |  |
| 149 | 1.3.4.2.1 | Ajustar los requisitos a partir de la validación realizada | 0.25d | 2019-02-01 11:14 | 2019-02-01 14:14 |  | Analista-Programador |
| 150 | 1.2.4.3 | **Validación de la especificación forma corregidsa** | 0.25d | 2019-02-01 14:14 | 2019-02-01 16:14 | 148 |  |
| 151 | 1.3.4.3.1 | Reunirse con el cliente para realizar la validación final de requisitos | 0.25d | 2019-02-01 14:14 | 2019-02-01 16:14 |  | Analista-Diseñador; Analista-Programador |
| 152 | 1.3 | **Diseño del sistema software** | 51.53d | 2019-01-01 09:00 | 2019-03-13 14:14 | 122 |  |
| 153 | 1.3.1 | **Diseño funcional** | 6d | 2019-01-01 09:00 | 2019-01-09 09:00 |  |  |
| 154 | 1.3.1.1 | **Diseño módulo del camarero** | 1d | 2019-01-01 09:00 | 2019-01-02 09:00 |  |  |
| 155 | 1.4.1.1.1 | Realizar diseño del módulo | 1d | 2019-01-01 09:00 | 2019-01-02 09:00 |  | Analista-Diseñador; Analista-Programador |
| 156 | 1.3.1.2 | **Diseño módulo de gestión de proveedores** | 1d | 2019-01-02 09:00 | 2019-01-03 09:00 | 154 |  |
| 157 | 1.4.1.2.1 | Realizar diseño del módulo | 1d | 2019-01-02 09:00 | 2019-01-03 09:00 |  | Analista-Diseñador; Analista-Programador |
| 158 | 1.3.1.3 | **Diseño módulo de cocinas/barras** | 1d | 2019-01-03 09:00 | 2019-01-04 09:00 | 156 |  |
| 159 | 1.4.1.3.1 | Realizar diseño del módulo | 1d | 2019-02-01 16:14 | 2019-02-04 16:14 |  | Analista-Diseñador; Analista-Programador |
| 160 | 1.3.1.4 | **Diseño módulo para muestra de datos y comandas** | 1d | 2019-01-04 09:00 | 2019-01-07 09:00 | 158 |  |
| 161 | 1.4.1.4.1 | Realizar diseño del módulo | 1d | 2019-01-04 09:00 | 2019-01-07 09:00 | 19 | Analista-Diseñador; Analista-Programador |
| 162 | 1.3.1.5 | **Diseño módulo de entretenimiento** | 1d | 2019-01-07 09:00 | 2019-01-08 09:00 | 160 |  |
| 163 | 1.4.1.5.1 | Realizar diseño del módulo | 1d | 2019-01-07 09:00 | 2019-01-08 09:00 |  | Analista-Diseñador; Analista-Programador |

| ID | WBS | Task | Duration | Start | Finish | Predecessors | Resources |
| --- | --- | --- | --- | --- | --- | --- | --- |
| 164 | 1.3.1.6 | **Diseño módulo de monitorización general del sistema** | 1d | 2019-01-08 09:00 | 2019-01-09 09:00 | 162 |  |
| 165 | 1.4.1.6.1 | Realizar diseño del módulo | 1d | 2019-01-08 09:00 | 2019-01-09 09:00 |  | Analista-Diseñador; Analista-Programador |
| 166 | 1.3.2 | **Diseño técnico** | 31.84d | 2019-01-09 09:00 | 2019-02-21 16:45 | 153 |  |
| 167 | 1.3.2.1 | **Selección de tecnologías** | 26.78d | 2019-01-09 09:00 | 2019-02-14 16:14 |  |  |
| 168 | 1.3.2.1.1 | **Base de datos a usar** | 1.5d | 2019-01-09 09:00 | 2019-01-10 14:00 |  |  |
| 169 | 1.4.2.1.1.1 | Comparar bases de datos disponibles | 1d | 2019-01-09 09:00 | 2019-01-10 09:00 |  | Analista-Programador |
| 170 | 1.4.2.1.1.2 | Elegir la opción que mejor se adapte al proyecto | 0.5d | 2019-01-10 09:00 | 2019-01-10 14:00 | 169 | Analista-Programador |
| 171 | 1.3.2.1.2 | **Sistema operativo y aplicaciones de las tablets** | 1.5d | 2019-02-12 09:14 | 2019-02-13 14:14 | 168 |  |
| 172 | 1.4.2.1.2.1 | Comparar los sistemas operativos disponibles | 1d | 2019-02-12 09:14 | 2019-02-13 09:14 | 20 | Analista-Programador |
| 173 | 1.4.2.1.2.2 | Elegir la opción que mejor se adapte al proyecto | 0.5d | 2019-02-13 09:14 | 2019-02-13 14:14 | 172 | Analista-Programador |
| 174 | 1.3.2.1.3 | **Lenguaje de programación y consultas SQL** | 1.25d | 2019-02-13 14:14 | 2019-02-14 16:14 | 171 |  |
| 175 | 1.4.2.1.3.1 | Analizar que lenguaje de programación y consultas SQL se adapta mejor a nuestra BD elegida | 1.25d | 2019-02-13 14:14 | 2019-02-14 16:14 |  | Analista-Programador; Programador Junior1 |
| 176 | 1.4.2.1.3.2 | Analizar que lenguaje se adapta mejor a las necesidades de la empresa | 1.25d | 2019-02-13 14:14 | 2019-02-14 16:14 |  | Analista-Programador; Programador Junior1 |
| 177 | 1.3.2.1.4 | **Interfaces de comunicación e interoperación con otras aplicaciones** | 1d | 2019-01-09 09:00 | 2019-01-10 09:00 |  |  |
| 178 | 1.4.2.1.4.1 | Diseñar mediante diagramas y diseño informal las interfaces | 1d | 2019-01-09 09:00 | 2019-01-10 09:00 |  | Analista-Diseñador |
| 179 | 1.3.2.2 | **Validación de tecnologías** | 5.06d | 2019-02-14 16:14 | 2019-02-21 16:45 | 167 |  |
| 180 | 1.3.2.2.1 | **Diseño de pruebas de rendimiento de las tecnologías** | 2d | 2019-02-14 16:14 | 2019-02-18 16:14 |  |  |
| 181 | 1.4.2.2.1.1 | Diseñar las pruebas de rendimiento | 2d | 2019-02-14 16:14 | 2019-02-18 16:14 |  | Analista-Diseñador |
| 182 | 1.3.2.2.2 | **Diseño de pruebas de coste de las tecnologías** | 2.81d | 2019-02-19 09:14 | 2019-02-21 16:45 | 180 |  |
| 183 | 1.4.2.2.2.1 | Diseñar las pruebas de coste | 2.81d | 2019-02-19 09:14 | 2019-02-21 16:45 | 21 | Analista-Diseñador |
| 184 | 1.3.3 | **Diseño de pruebas** | 10.53d | 2019-02-21 16:45 | 2019-03-08 13:00 | 166 |  |
| 185 | 1.3.3.1 | **Diseño de pruebas de aceptación** | 3.19d | 2019-02-21 16:45 | 2019-02-27 09:14 |  |  |
| 186 | 1.3.3.1.1 | **Diseño de pruebas para los gerentes del local** | 1.5d | 2019-02-21 16:45 | 2019-02-25 11:45 |  |  |
| 187 | 1.4.3.1.1.1 | Redactar informe de los minimos que deben cubrir las pruebas | 0.5d | 2019-02-21 16:45 | 2019-02-22 11:45 |  | Analista-Diseñador |
| 188 | 1.4.3.1.1.2 | Diseñar las pruebas basandose en los informes | 1d | 2019-02-22 11:45 | 2019-02-25 11:45 | 187 | Analista-Diseñador |

| ID | WBS | Task | Duration | Start | Finish | Predecessors | Resources |
| --- | --- | --- | --- | --- | --- | --- | --- |
| 189 | 1.3.3.1.2 | **Diseño de pruebas sobre el personal del local** | 1.5d | 2019-02-21 16:45 | 2019-02-25 11:45 |  |  |
| 190 | 1.4.3.1.2.1 | Redactar informe de los minimos que deben cubrir las pruebas | 0.5d | 2019-02-21 16:45 | 2019-02-22 11:45 |  | Analista-Programador |
| 191 | 1.4.3.1.2.2 | Diseñar las pruebas basandose en los informes | 1d | 2019-02-22 11:45 | 2019-02-25 11:45 | 190 | Analista-Programador |
| 192 | 1.3.3.1.3 | **Diseño de pruebas sobre los usuarios del local** | 1.5d | 2019-02-21 16:45 | 2019-02-25 11:45 |  |  |
| 193 | 1.4.3.1.3.1 | Redactar informe de los minimos que deben cubrir las pruebas | 0.5d | 2019-02-21 16:45 | 2019-02-22 11:45 |  | Programador Junior1; Programador Junior2 |
| 194 | 1.4.3.1.3.2 | Diseñar las pruebas basandose en los informes | 1d | 2019-02-22 11:45 | 2019-02-25 11:45 | 193 | Programador Junior1; Programador Junior2 |
| 195 | 1.3.3.1.4 | **Diseño de pruebas para los proveedores** | 1.69d | 2019-02-25 11:45 | 2019-02-27 09:14 | 186 |  |
| 196 | 1.4.3.1.4.1 | Redactar informe de los minimos que deben cubrir las pruebas | 0.5d | 2019-02-25 11:45 | 2019-02-25 16:45 |  | Analista-Diseñador |
| 197 | 1.4.3.1.4.2 | Diseñar las pruebas basandose en los informes | 1d | 2019-02-26 09:14 | 2019-02-27 09:14 | 22, 196 | Analista-Diseñador |
| 198 | 1.3.3.2 | **Diseño de pruebas del sistema** | 3.19d | 2019-02-25 11:45 | 2019-02-28 14:14 |  |  |
| 199 | 1.3.3.2.1 | **Diseño de pruebas para comunicación con PayPal** | 1.5d | 2019-02-25 11:45 | 2019-02-26 16:45 | 189 |  |
| 200 | 1.4.3.2.1.1 | Redactar informe de los minimos que deben cubrir las pruebas | 0.5d | 2019-02-25 11:45 | 2019-02-25 16:45 |  | Analista-Programador |
| 201 | 1.4.3.2.1.2 | Diseñar las pruebas basandose en los informes | 1d | 2019-02-25 16:45 | 2019-02-26 16:45 | 200 | Analista-Programador |
| 202 | 1.3.3.2.2 | **Diseño de pruebas para comunicación con terminales TPV** | 1.5d | 2019-02-25 11:45 | 2019-02-26 16:45 | 192 |  |
| 203 | 1.4.3.2.2.1 | Redactar informe de los minimos que deben cubrir las pruebas | 0.5d | 2019-02-25 11:45 | 2019-02-25 16:45 |  | Programador Junior1; Programador Junior2 |
| 204 | 1.4.3.2.2.2 | Diseñar las pruebas basandose en los informes | 1d | 2019-02-25 16:45 | 2019-02-26 16:45 | 203 | Programador Junior1; Programador Junior2 |
| 205 | 1.3.3.2.3 | **Diseño de pruebas para comunicación con tablets del local** | 1.5d | 2019-02-27 09:14 | 2019-02-28 14:14 | 195 |  |
| 206 | 1.4.3.2.3.1 | Redactar informe de los minimos que deben cubrir las pruebas | 0.5d | 2019-02-27 09:14 | 2019-02-27 14:14 |  | Analista-Diseñador |
| 207 | 1.4.3.2.3.2 | Diseñar las pruebas basandose en los informes | 1d | 2019-02-27 14:14 | 2019-02-28 14:14 | 206 | Analista-Diseñador |
| 208 | 1.3.3.3 | **Diseño de pruebas de integración** | 1.5d | 2019-02-26 16:45 | 2019-02-28 11:45 |  |  |
| 209 | 1.3.3.3.1 | **Diseño de pruebas para comunicación entre módulos** | 1.5d | 2019-02-26 16:45 | 2019-02-28 11:45 | 199 |  |
| 210 | 1.4.3.3.1.1 | Redactar informe de los minimos que deben cubrir las pruebas | 0.5d | 2019-02-26 16:45 | 2019-02-27 11:45 |  | Analista-Programador |
| 211 | 1.4.3.3.1.2 | Diseñar las pruebas basandose en los informes | 1d | 2019-02-27 11:45 | 2019-02-28 11:45 | 210 | Analista-Programador |
| 212 | 1.3.3.4 | **Diseño de pruebas de unidad** | 6.03d | 2019-02-28 11:45 | 2019-03-08 13:00 | 208 |  |
| 213 | 1.3.3.4.1 | **Diseño de pruebas de módulo de monitorización general del sistema** | 1.5d | 2019-02-28 11:45 | 2019-03-01 16:45 |  |  |
| 214 | 1.4.3.4.1.1 | Redactar informe de los minimos que deben cubrir las pruebas | 0.5d | 2019-02-28 11:45 | 2019-02-28 16:45 |  | Analista-Diseñador |
| 215 | 1.4.3.4.1.2 | Diseñar las pruebas basandose en los informes | 1d | 2019-02-28 16:45 | 2019-03-01 16:45 | 214 | Analista-Diseñador |

| ID | WBS | Task | Duration | Start | Finish | Predecessors | Resources |
| --- | --- | --- | --- | --- | --- | --- | --- |
| 216 | 1.3.3.4.2 | **Diseño de pruebas de módulo de entretenimiento** | 1.5d | 2019-03-01 16:45 | 2019-03-05 11:45 | 213 |  |
| 217 | 1.4.3.4.2.1 | Redactar informe de los minimos que deben cubrir las pruebas | 0.5d | 2019-03-01 16:45 | 2019-03-04 11:45 |  | Analista-Diseñador |
| 218 | 1.4.3.4.2.2 | Diseñar las pruebas basandose en los informes | 1d | 2019-03-04 11:45 | 2019-03-05 11:45 | 217 | Analista-Diseñador |
| 219 | 1.3.3.4.3 | **Diseño de pruebas de módulo para muestra de datos y comandas** | 1.5d | 2019-03-05 13:00 | 2019-03-07 08:00 |  |  |
| 220 | 1.4.3.4.3.1 | Redactar informe de los minimos que deben cubrir las pruebas | 0.5d | 2019-03-05 13:00 | 2019-03-06 08:00 | 23 | Analista-Programador |
| 221 | 1.4.3.4.3.2 | Diseñar las pruebas basandose en los informes | 1d | 2019-03-06 08:00 | 2019-03-07 08:00 | 220 | Analista-Programador |
| 222 | 1.3.3.4.4 | **Diseño de pruebas de módulo de gestión de proveedores** | 1.5d | 2019-03-07 08:00 | 2019-03-08 13:00 | 219 |  |
| 223 | 1.4.3.4.4.1 | Redactar informe de los minimos que deben cubrir las pruebas | 0.5d | 2019-03-07 08:00 | 2019-03-07 13:00 |  | Analista-Programador |
| 224 | 1.4.3.4.4.2 | Diseñar las pruebas basandose en los informes | 1d | 2019-03-07 13:00 | 2019-03-08 13:00 | 223 | Analista-Programador |
| 225 | 1.3.3.4.5 | **Diseño de pruebas de módulo del camarero** | 1.5d | 2019-02-28 11:45 | 2019-03-01 16:45 |  |  |
| 226 | 1.4.3.4.5.1 | Redactar informe de los minimos que deben cubrir las pruebas | 0.5d | 2019-02-28 11:45 | 2019-02-28 16:45 |  | Programador Junior1; Programador Junior2 |
| 227 | 1.4.3.4.5.2 | Diseñar las pruebas basandose en los informes | 1d | 2019-02-28 16:45 | 2019-03-01 16:45 | 226 | Programador Junior1; Programador Junior2 |
| 228 | 1.3.3.4.6 | **Diseño de pruebas del módulo de cocinas/barra** | 1.5d | 2019-03-01 16:45 | 2019-03-05 11:45 | 225 |  |
| 229 | 1.4.3.4.6.1 | Redactar informe de los minimos que deben cubrir las pruebas | 0.5d | 2019-03-01 16:45 | 2019-03-04 11:45 |  | Programador Junior1; Programador Junior2 |
| 230 | 1.4.3.4.6.2 | Diseñar las pruebas basandose en los informes | 1d | 2019-03-04 11:45 | 2019-03-05 11:45 | 229 | Programador Junior1; Programador Junior2 |
| 231 | 1.3.4 | **Planificación** | 3.15d | 2019-03-08 13:00 | 2019-03-13 14:14 | 184 |  |
| 232 | 1.3.4.1 | **Revisión de la planificación** | 2.65d | 2019-03-08 13:00 | 2019-03-13 09:14 |  |  |
| 233 | 1.4.4.1.1 | Revisar que la planificación se ajuste al tiempo adecuado | 1.5d | 2019-03-08 13:00 | 2019-03-12 08:00 |  | Analista-Programador |
| 234 | 1.4.4.1.2 | Revisar que la planificación se ajuste adecuadamente a nuestros recursos | 1d | 2019-03-12 09:14 | 2019-03-13 09:14 | 24, 233 | Analista-Programador |
| 235 | 1.3.4.2 | **Validación de la planificación** | 0.5d | 2019-03-13 09:14 | 2019-03-13 14:14 | 232 |  |
| 236 | 1.4.4.2.1 | Reunirse con el jefe para validar la planificación revisada, incluye informe semanal | 0.5d | 2019-03-13 09:14 | 2019-03-13 14:14 |  | Analista-Programador; Director de proyecto |
| 237 | 1.4 | **Codificación del sistema** | 20.75d | 2019-03-13 14:14 | 2019-04-11 11:14 | 152 |  |
| 238 | 1.4.1 | **Ambiente de desarrollo** | 6.25d | 2019-03-13 14:14 | 2019-03-21 16:14 |  |  |
| 239 | 1.4.1.1 | **Instalación del entorno de trabajo** | 2d | 2019-03-13 14:14 | 2019-03-15 14:14 |  |  |
| 240 | 1.4.1.1.1 | **Selección de tecnologías** | 0.5d | 2019-03-13 14:14 | 2019-03-14 09:14 |  |  |
| 241 | 1.5.1.1.1.1 | Seleccionar las tecnologías basandose en la fase de análisis | 0.5d | 2019-03-13 14:14 | 2019-03-14 09:14 |  | Analista-Diseñador |

| ID | WBS | Task | Duration | Start | Finish | Predecessors | Resources |
| --- | --- | --- | --- | --- | --- | --- | --- |
| 242 | 1.4.1.1.2 | **Adquisición de tecnologías** | 0.5d | 2019-03-14 09:14 | 2019-03-14 14:14 | 240 |  |
| 243 | 1.5.1.1.2.1 | Realizar la compra de licencias de software de empresa | 0.5d | 2019-03-14 09:14 | 2019-03-14 14:14 |  | Director de proyecto |
| 244 | 1.5.1.1.2.2 | Comprar el hardware necesario | 0.5d | 2019-03-14 09:14 | 2019-03-14 14:14 |  | Analista-Programador |
| 245 | 1.4.1.1.3 | **Instalación en ordenadores locales** | 1d | 2019-03-14 14:14 | 2019-03-15 14:14 | 242 |  |
| 246 | 1.5.1.1.3.1 | Instalar el software adquirido en los ordenadores locales | 1d | 2019-03-14 14:14 | 2019-03-15 14:14 |  | Analista-Programador |
| 247 | 1.4.1.2 | **Configuración del entorno de trabajo** | 2d | 2019-03-15 14:14 | 2019-03-19 14:14 | 239 |  |
| 248 | 1.4.1.2.1 | **Ajuste de propiedades generales** | 2d | 2019-03-15 14:14 | 2019-03-19 14:14 |  |  |
| 249 | 1.5.1.2.1.1 | Configurar el SO y programas básico de uso general | 2d | 2019-03-15 14:14 | 2019-03-19 14:14 |  | Director de proyecto |
| 250 | 1.4.1.2.2 | **Ajuste de propiedades específicas** | 2d | 2019-03-15 14:14 | 2019-03-19 14:14 |  |  |
| 251 | 1.5.1.2.2.1 | Preparar el software específico en los equipos de personal especializado | 2d | 2019-03-15 14:14 | 2019-03-19 14:14 | 25 | Programador Junior1; Programador Junior2 |
| 252 | 1.4.1.3 | **Revisiones de eficiencia y velocidad del entorno** | 2.25d | 2019-03-19 14:14 | 2019-03-21 16:14 | 247 |  |
| 253 | 1.4.1.3.1 | **Evaluación de eficiencia y velocidad** | 1d | 2019-03-19 14:14 | 2019-03-20 14:14 |  |  |
| 254 | 1.5.1.3.1.1 | Realizar evaluación de eficiencia y velocidad durante la preparación de los ordenadores | 1d | 2019-03-19 14:14 | 2019-03-20 14:14 |  | Programador Junior1 |
| 255 | 1.4.1.3.2 | **Reconfiguración de tecnologías o herramientas** | 1d | 2019-03-20 14:14 | 2019-03-21 14:14 | 253 |  |
| 256 | 1.5.1.3.2.1 | Ajustar las configuraciones iniciales basándose en las evaluaciones | 1d | 2019-03-20 14:14 | 2019-03-21 14:14 |  | Programador Junior2 |
| 257 | 1.4.1.3.3 | **Selección parcial de otras herramientas** | 0.25d | 2019-03-21 14:14 | 2019-03-21 16:14 | 255 |  |
| 258 | 1.5.1.3.3.1 | Cubrir problemas encontrados con las herramientas de terceros necesarias | 0.25d | 2019-03-21 14:14 | 2019-03-21 16:14 |  | Programador Junior1; Programador Junior2 |
| 259 | 1.4.2 | **Módulos** | 10.28d | 2019-03-21 16:14 | 2019-04-05 09:29 | 238 |  |
| 260 | 1.4.2.1 | **Módulo del camarero** | 4.75d | 2019-03-21 16:14 | 2019-03-28 14:14 |  |  |
| 261 | 1.4.2.1.1 | **Almacén de datos de camareros** | 2.5d | 2019-03-26 09:14 | 2019-03-28 14:14 |  |  |
| 262 | 1.5.2.1.1.1 | Preparar la BD y funciones para uso de camareros | 2.5d | 2019-03-26 09:14 | 2019-03-28 14:14 | 26 | Programador Senior |
| 263 | 1.4.2.1.2 | **Función de comunicar llamadas al camarero** | 1d | 2019-03-21 16:14 | 2019-03-22 16:14 |  |  |
| 264 | 1.5.2.1.2.1 | Implementar la función de llamadas al camararero mediante la interfaz diseñada | 1d | 2019-03-21 16:14 | 2019-03-22 16:14 |  | Programador Junior1 |
| 265 | 1.4.2.1.3 | **Función de liberar una mesa ocupada** | 1d | 2019-03-21 16:14 | 2019-03-22 16:14 |  |  |
| 266 | 1.5.2.1.3.1 | Implementar la función que permite liberar mesas a camareros | 1d | 2019-03-21 16:14 | 2019-03-22 16:14 |  | Programador Junior2 |

| ID | WBS | Task | Duration | Start | Finish | Predecessors | Resources |
| --- | --- | --- | --- | --- | --- | --- | --- |
| 267 | 1.4.2.1.4 | **Interfaz visual agradable** | 0.5d | 2019-03-21 16:14 | 2019-03-22 11:14 |  |  |
| 268 | 1.5.2.1.4.1 | Programar la interfaz visual | 0.5d | 2019-03-21 16:14 | 2019-03-22 11:14 |  | Analista-Diseñador; Analista-Programador |
| 269 | 1.4.2.2 | **Módulo de gestión de proveedores** | 5.75d | 2019-03-21 16:14 | 2019-03-29 14:14 |  |  |
| 270 | 1.4.2.2.1 | **Almacén de stock** | 1d | 2019-03-28 14:14 | 2019-03-29 14:14 | 261 |  |
| 271 | 1.5.2.2.1.1 | Programar el gestor de stock y conectarlo a la BD | 1d | 2019-03-28 14:14 | 2019-03-29 14:14 |  | Programador Senior |
| 272 | 1.4.2.2.2 | **Interfaz visual agradable** | 0.5d | 2019-03-21 16:14 | 2019-03-22 11:14 |  |  |
| 273 | 1.5.2.2.2.1 | Programar la interfaz visual | 0.5d | 2019-03-21 16:14 | 2019-03-22 11:14 |  | Analista-Diseñador; Analista-Programador |
| 274 | 1.4.2.3 | **Módulo de cocinas/barra** | 2.25d | 2019-03-21 16:14 | 2019-03-26 09:14 |  |  |
| 275 | 1.4.2.3.1 | **Función de cobrar con tarjeta u otros métodos** | 2d | 2019-03-21 16:14 | 2019-03-25 16:14 |  |  |
| 276 | 1.5.2.3.1.1 | Programar funciones de cobro | 1.5d | 2019-03-21 16:14 | 2019-03-25 11:14 |  | Programador Junior1 |
| 277 | 1.5.2.3.1.2 | Adaptar funciones de cobro a todos los métodos de pago | 0.5d | 2019-03-25 11:14 | 2019-03-25 16:14 | 276 | Programador Junior1 |
| 278 | 1.4.2.3.2 | **Función de proteger los datos de las transacciones** | 1.5d | 2019-03-21 16:14 | 2019-03-25 11:14 |  |  |
| 279 | 1.5.2.3.2.1 | Asegurarse de que se guardan apropiadamente los datos | 0.5d | 2019-03-21 16:14 | 2019-03-22 11:14 |  | Programador Junior2 |
| 280 | 1.5.2.3.2.2 | Proteger mediante encriptación o restricciones de acceso los datos | 1d | 2019-03-22 11:14 | 2019-03-25 11:14 | 279 | Programador Junior2 |
| 281 | 1.4.2.3.3 | **Almacén de datos de comandas** | 2d | 2019-03-21 16:14 | 2019-03-25 16:14 |  |  |
| 282 | 1.5.2.3.3.1 | Programar el almacen de datos de pedidos | 2d | 2019-03-21 16:14 | 2019-03-25 16:14 |  | Programador Junior1; Programador Junior2 |
| 283 | 1.4.2.3.4 | **Almacén de datos de mesas** | 0.25d | 2019-03-25 16:14 | 2019-03-26 09:14 | 281 |  |
| 284 | 1.5.2.3.4.1 | Adaptar el almacén de datos de pedidos a las mesas | 0.25d | 2019-03-25 16:14 | 2019-03-26 09:14 | 282 | Programador Junior1; Programador Junior2 |
| 285 | 1.4.2.4 | **Módulo para muestra de datos y comandas** | 4.53d | 2019-03-29 14:14 | 2019-04-05 09:29 | 269, 274 |  |
| 286 | 1.4.2.4.1 | **Función de seleccionar productos y pedidos** | 2d | 2019-03-29 14:14 | 2019-04-02 14:14 |  |  |
| 287 | 1.5.2.4.1.1 | Implementar navegación de menú | 2d | 2019-03-29 14:14 | 2019-04-02 14:14 |  | Programador Senior |
| 288 | 1.4.2.4.2 | **Función de plasmar información del pedido** | 1d | 2019-04-02 14:29 | 2019-04-03 14:29 |  |  |
| 289 | 1.5.2.4.2.1 | Implementar función de información de pedido | 1d | 2019-04-02 14:29 | 2019-04-03 14:29 | 27 | Programador Junior1 |
| 290 | 1.4.2.4.3 | **Función de enviar la comanda** | 1d | 2019-03-29 14:14 | 2019-04-01 14:14 |  |  |
| 291 | 1.5.2.4.3.1 | Imlementar función de envio de comanda | 1d | 2019-03-29 14:14 | 2019-04-01 14:14 |  | Programador Junior2 |

| ID | WBS | Task | Duration | Start | Finish | Predecessors | Resources |
| --- | --- | --- | --- | --- | --- | --- | --- |
| 292 | 1.4.2.4.4 | **Función de reservar mesa libre** | 1d | 2019-03-29 14:14 | 2019-04-01 14:14 |  |  |
| 293 | 1.5.2.4.4.1 | Implementar función de reserva | 1d | 2019-03-29 14:14 | 2019-04-01 14:14 |  | Analista-Programador |
| 294 | 1.4.2.4.5 | **Función de ver estado de la mesa** | 1d | 2019-04-02 14:14 | 2019-04-03 14:14 |  |  |
| 295 | 1.5.2.4.5.1 | Implementar función de estado | 1d | 2019-04-02 14:14 | 2019-04-03 14:14 | 287 | Programador Senior |
| 296 | 1.4.2.4.6 | **Función de informar al cliente** | 1.5d | 2019-04-03 14:29 | 2019-04-05 09:29 |  |  |
| 297 | 1.5.2.4.6.1 | Adaptar función de comunicación para el cliente | 1.5d | 2019-04-03 14:29 | 2019-04-05 09:29 | 289 | Programador Junior1 |
| 298 | 1.4.2.4.7 | **Función de códigos QR** | 0.25d | 2019-04-01 14:14 | 2019-04-01 16:14 |  |  |
| 299 | 1.5.2.4.7.1 | Adaptar el lector QR a nuestros programas | 0.25d | 2019-04-01 14:14 | 2019-04-01 16:14 | 291 | Programador Junior2 |
| 300 | 1.4.2.4.8 | **Interfaz visual agradable** | 0.25d | 2019-03-29 14:14 | 2019-03-29 16:14 |  |  |
| 301 | 1.5.2.4.8.1 | Programar la interfaz visual | 0.25d | 2019-03-29 14:14 | 2019-03-29 16:14 |  | Analista-Diseñador; Analista-Programador |
| 302 | 1.4.2.5 | **Módulo de entretenimiento** | 2d | 2019-03-21 16:14 | 2019-03-25 16:14 |  |  |
| 303 | 1.4.2.5.1 | **Función de ofrecer entretenimiento al cliente** | 0.12d | 2019-03-21 16:14 | 2019-03-22 08:14 |  |  |
| 304 | 1.5.2.5.1.1 | Asegurar que los programas adecuados están instalados y son accesibles | 0.12d | 2019-03-21 16:14 | 2019-03-22 08:14 |  | Programador Junior1 |
| 305 | 1.4.2.5.2 | **Función de interactuar con el local** | 2d | 2019-03-21 16:14 | 2019-03-25 16:14 |  |  |
| 306 | 1.5.2.5.2.1 | Preparar conexiones visuales de camaras | 0.5d | 2019-03-22 08:14 | 2019-03-22 13:14 | 304 | Programador Junior1 |
| 307 | 1.5.2.5.2.2 | Preparar lista de música | 0.06d | 2019-03-21 16:14 | 2019-03-21 16:44 |  | Programador Junior2 |
| 308 | 1.5.2.5.2.3 | Preparar programa de control de interacción | 1d | 2019-03-21 16:14 | 2019-03-22 16:14 |  | Analista-Programador |
| 309 | 1.5.2.5.2.4 | Completar programa de control de interacción con los módulos | 1d | 2019-03-22 16:14 | 2019-03-25 16:14 | 308, 307, 306 | Programador Senior |
| 310 | 1.4.2.5.3 | **Interfaz visual agradable** | 0.5d | 2019-03-21 16:14 | 2019-03-22 11:14 |  |  |
| 311 | 1.5.2.5.3.1 | Programar interfaz visual | 0.5d | 2019-03-21 16:14 | 2019-03-22 11:14 |  | Analista-Diseñador; Analista-Programador |
| 312 | 1.4.2.6 | **Módulo de monitorización y gerencia** | 1d | 2019-03-25 16:14 | 2019-03-26 16:14 | 302 |  |
| 313 | 1.4.2.6.1 | **Almacén de datos legales** | 1d | 2019-03-25 16:14 | 2019-03-26 16:14 |  |  |
| 314 | 1.5.2.6.1.1 | Preparar BD y gestión de BD | 1d | 2019-03-25 16:14 | 2019-03-26 16:14 |  | Programador Junior1 |
| 315 | 1.5.2.6.1.2 | Revisar cumplimiento de requerimientos legales de la BD | 0.25d | 2019-03-25 16:14 | 2019-03-26 09:14 |  | Programador Senior |

| ID | WBS | Task | Duration | Start | Finish | Predecessors | Resources |
| --- | --- | --- | --- | --- | --- | --- | --- |
| 316 | 1.4.2.6.2 | **Almacén de nóminas** | 1d | 2019-03-25 16:14 | 2019-03-26 16:14 |  |  |
| 317 | 1.5.2.6.2.1 | Preparar BD y gestión de BD para nóminas | 1d | 2019-03-25 16:14 | 2019-03-26 16:14 |  | Programador Junior2 |
| 318 | 1.5.2.6.2.2 | Automatizar las nóminas y su almacenamiento de datos | 1d | 2019-03-25 16:14 | 2019-03-26 16:14 |  | Analista-Programador |
| 319 | 1.4.2.6.3 | **Interfaz visual agradable** | 0.5d | 2019-03-25 16:14 | 2019-03-26 11:14 |  |  |
| 320 | 1.5.2.6.3.1 | Programar la interfaz visual | 0.5d | 2019-03-25 16:14 | 2019-03-26 11:14 |  | Analista-Diseñador; Analista-Programador |
| 321 | 1.4.3 | **Depuración** | 4.22d | 2019-04-05 09:29 | 2019-04-11 11:14 | 259 |  |
| 322 | 1.4.3.1 | **Localización de defectos** | 0.69d | 2019-04-05 09:29 | 2019-04-05 15:59 |  |  |
| 323 | 1.4.3.1.1 | **Listado de defectos** | 0.5d | 2019-04-05 09:29 | 2019-04-05 14:29 |  |  |
| 324 | 1.5.3.1.1.1 | Realizar un listado intensivo de defectos encontrados en la codificación | 0.5d | 2019-04-05 09:29 | 2019-04-05 14:29 |  | Programador Senior |
| 325 | 1.4.3.1.2 | **Ubicación de defectos** | 0.19d | 2019-04-05 14:29 | 2019-04-05 15:59 | 323 |  |
| 326 | 1.5.3.1.2.1 | Completar listado con posiciones exactas (linea, programa, módulo, etc) de los errores | 0.06d | 2019-04-05 14:29 | 2019-04-05 14:59 |  | Programador Senior |
| 327 | 1.5.3.1.2.2 | Incluir en listado posibles relaciones del error con otro módulo o trozo de código | 0.12d | 2019-04-05 14:59 | 2019-04-05 15:59 | 326 | Programador Senior |
| 328 | 1.4.3.2 | **Corrección de defectos** | 3.53d | 2019-04-05 15:59 | 2019-04-11 11:14 | 322 |  |
| 329 | 1.4.3.2.1 | **Modificaciones necesarias** | 2.5d | 2019-04-05 15:59 | 2019-04-10 10:59 |  |  |
| 330 | 1.5.3.2.1.1 | Implementar las modificaciones y arreglos de la codificación | 2.5d | 2019-04-05 15:59 | 2019-04-10 10:59 |  | Analista-Programador; Programador Junior1; Programador Junior2; Programador Senior |
| 331 | 1.4.3.2.2 | **Revisión de corrección del defecto** | 1d | 2019-04-10 11:14 | 2019-04-11 11:14 | 329 |  |
| 332 | 1.5.3.2.2.1 | Revisar todos los errores del listado para comprobar que han sido arreglados correctamente | 1d | 2019-04-10 11:14 | 2019-04-11 11:14 | 28 | Programador Senior |
| 333 | 1.5 | **Pruebas del sistema y sus componentes** | 15.27d | 2019-04-11 11:14 | 2019-05-02 14:24 | 237 |  |
| 334 | 1.5.1 | **Planificación de pruebas** | 2.5d | 2019-04-11 11:14 | 2019-04-15 16:14 |  |  |
| 335 | 1.5.1.1 | **Pruebas de aceptación** | 0.5d | 2019-04-11 11:14 | 2019-04-11 16:14 |  |  |
| 336 | 1.5.1.1.1 | **Pruebas para los gerentes de local** | 0.5d | 2019-04-11 11:14 | 2019-04-11 16:14 |  |  |
| 337 | 1.6.1.1.1.1 | Planear las pruebas basándose en su diseño | 0.5d | 2019-04-11 11:14 | 2019-04-11 16:14 |  | Programador Junior1 |
| 338 | 1.5.1.1.2 | **Pruebas sobre el personal de local** | 0.5d | 2019-04-11 11:14 | 2019-04-11 16:14 |  |  |
| 339 | 1.6.1.1.2.1 | Planear las pruebas basándose en su diseño | 0.5d | 2019-04-11 11:14 | 2019-04-11 16:14 |  | Programador Junior2 |

| ID | WBS | Task | Duration | Start | Finish | Predecessors | Resources |
| --- | --- | --- | --- | --- | --- | --- | --- |
| 340 | 1.5.1.1.3 | **Pruebas sobre los usuarios del local** | 0.5d | 2019-04-11 11:14 | 2019-04-11 16:14 |  |  |
| 341 | 1.6.1.1.3.1 | Planear las pruebas basándose en su diseño | 0.5d | 2019-04-11 11:14 | 2019-04-11 16:14 |  | Programador Senior |
| 342 | 1.5.1.1.4 | **Pruebas para los proveedores** | 0.5d | 2019-04-11 11:14 | 2019-04-11 16:14 |  |  |
| 343 | 1.6.1.1.4.1 | Planear las pruebas basándose en su diseño | 0.5d | 2019-04-11 11:14 | 2019-04-11 16:14 |  | Analista-Diseñador |
| 344 | 1.5.1.2 | **Pruebas del sistema** | 0.5d | 2019-04-11 16:14 | 2019-04-12 11:14 | 335 |  |
| 345 | 1.5.1.2.1 | **Pruebas para comunicación con PayPal** | 0.5d | 2019-04-11 16:14 | 2019-04-12 11:14 |  |  |
| 346 | 1.6.1.2.1.1 | Planear las pruebas basándose en su diseño | 0.5d | 2019-04-11 16:14 | 2019-04-12 11:14 |  | Programador Junior1 |
| 347 | 1.5.1.2.2 | **Pruebas para comunicación con terminales TPV** | 0.5d | 2019-04-11 16:14 | 2019-04-12 11:14 |  |  |
| 348 | 1.6.1.2.2.1 | Planear las pruebas basándose en su diseño | 0.5d | 2019-04-11 16:14 | 2019-04-12 11:14 |  | Programador Junior2 |
| 349 | 1.5.1.2.3 | **Pruebas para comunicación con tablets de local** | 0.5d | 2019-04-11 16:14 | 2019-04-12 11:14 |  |  |
| 350 | 1.6.1.2.3.1 | Planear las pruebas basándose en su diseño | 0.5d | 2019-04-11 16:14 | 2019-04-12 11:14 |  | Programador Senior |
| 351 | 1.5.1.3 | **Pruebas de integración** | 0.5d | 2019-04-12 11:14 | 2019-04-12 16:14 | 344 |  |
| 352 | 1.5.1.3.1 | **Pruebas para comunicación entre módulos** | 0.5d | 2019-04-12 11:14 | 2019-04-12 16:14 |  |  |
| 353 | 1.6.1.3.1.1 | Planear las pruebas basándose en su diseño | 0.5d | 2019-04-12 11:14 | 2019-04-12 16:14 |  | Programador Senior |
| 354 | 1.5.1.4 | **Pruebas de unidad** | 1d | 2019-04-12 16:14 | 2019-04-15 16:14 | 351 |  |
| 355 | 1.5.1.4.1 | **Pruebas de módulo de monitorización general del sistema** | 0.5d | 2019-04-12 16:14 | 2019-04-15 11:14 |  |  |
| 356 | 1.6.1.4.1.1 | Planear las pruebas basándose en su diseño | 0.5d | 2019-04-12 16:14 | 2019-04-15 11:14 |  | Programador Junior1 |
| 357 | 1.5.1.4.2 | **Pruebas de módulo de entretenimiento** | 0.5d | 2019-04-12 16:14 | 2019-04-15 11:14 |  |  |
| 358 | 1.6.1.4.2.1 | Planear las pruebas basándose en su diseño | 0.5d | 2019-04-12 16:14 | 2019-04-15 11:14 |  | Programador Junior2 |
| 359 | 1.5.1.4.3 | **Pruebas de módulo para muestra de datos y comandas** | 0.5d | 2019-04-12 16:14 | 2019-04-15 11:14 |  |  |
| 360 | 1.6.1.4.3.1 | Planear las pruebas basándose en su diseño | 0.5d | 2019-04-12 16:14 | 2019-04-15 11:14 |  | Programador Senior |
| 361 | 1.5.1.4.4 | **Pruebas de módulo de gestión de proveedores** | 0.5d | 2019-04-15 11:14 | 2019-04-15 16:14 | 355 |  |
| 362 | 1.6.1.4.4.1 | Planear las pruebas basándose en su diseño | 0.5d | 2019-04-15 11:14 | 2019-04-15 16:14 |  | Programador Junior1 |
| 363 | 1.5.1.4.5 | **Pruebas de módulo del camarero** | 0.5d | 2019-04-15 11:14 | 2019-04-15 16:14 | 357 |  |
| 364 | 1.6.1.4.5.1 | Planear las pruebas basándose en su diseño | 0.5d | 2019-04-15 11:14 | 2019-04-15 16:14 |  | Programador Junior2 |

| ID | WBS | Task | Duration | Start | Finish | Predecessors | Resources |
| --- | --- | --- | --- | --- | --- | --- | --- |
| 365 | 1.5.1.4.6 | **Pruebas del módulo de cocinas/barra** | 0.5d | 2019-04-15 11:14 | 2019-04-15 16:14 | 359 |  |
| 366 | 1.6.1.4.6.1 | Planear las pruebas basándose en su diseño | 0.5d | 2019-04-15 11:14 | 2019-04-15 16:14 |  | Programador Senior |
| 367 | 1.5.2 | **Ejecución de pruebas** | 10.03d | 2019-04-15 16:14 | 2019-04-29 16:29 | 334 |  |
| 368 | 1.5.2.1 | **Ejecución de casos de prueba** | 3d | 2019-04-15 16:14 | 2019-04-18 16:14 |  |  |
| 369 | 1.5.2.1.1 | **Ejecución de conjunto de casos de unidad** | 2d | 2019-04-15 16:14 | 2019-04-17 16:14 |  |  |
| 370 | 1.6.2.1.1.1 | Dividir los equipos para ejecutar las pruebas de cada unidad | 0.5d | 2019-04-15 16:14 | 2019-04-16 11:14 |  | Programador Senior |
| 371 | 1.6.2.1.1.2 | Ejecutar las pruebas de cada módulo individual | 2d | 2019-04-15 16:14 | 2019-04-17 16:14 | 29 | Analista-Programador |
| 372 | 1.5.2.1.2 | **Ejecución de conjunto de casos de integración** | 2.5d | 2019-04-15 16:14 | 2019-04-18 11:14 |  |  |
| 373 | 1.6.2.1.2.1 | Ejecutar las pruebas para comprobar que la integración de módulos no tiene fallos | 2.5d | 2019-04-15 16:14 | 2019-04-18 11:14 |  | Programador Junior1 |
| 374 | 1.5.2.1.3 | **Ejecución de conjunto de casos de sistema** | 2.5d | 2019-04-15 16:14 | 2019-04-18 11:14 |  |  |
| 375 | 1.6.2.1.3.1 | Ejecutar las pruebas de sistema | 2.5d | 2019-04-15 16:14 | 2019-04-18 11:14 |  | Programador Junior2 |
| 376 | 1.5.2.1.4 | **Ejecución de conjunto de casos de validación** | 2.5d | 2019-04-16 11:14 | 2019-04-18 16:14 |  |  |
| 377 | 1.6.2.1.4.1 | Ejecutar las pruebas de validación del programa | 2.5d | 2019-04-16 11:14 | 2019-04-18 16:14 | 370 | Programador Senior |
| 378 | 1.5.2.2 | **Listado de errores** | 2.5d | 2019-04-18 16:14 | 2019-04-23 11:14 | 368 |  |
| 379 | 1.5.2.2.1 | **Enumeración de errores graves** | 2d | 2019-04-18 16:14 | 2019-04-22 16:14 |  |  |
| 380 | 1.6.2.2.1.1 | Crear un listado con los errores que se consideran más graves | 0.5d | 2019-04-18 16:14 | 2019-04-19 11:14 |  | Analista-Programador |
| 381 | 1.6.2.2.1.2 | Analizar cuales de los errores son tan graves como se estima y cuales pueden desestimarse | 1.5d | 2019-04-19 11:14 | 2019-04-22 16:14 | 380 | Analista-Programador |
| 382 | 1.5.2.2.2 | **Desestimación de errores leves o de otro tipo** | 0.5d | 2019-04-22 16:14 | 2019-04-23 11:14 |  |  |
| 383 | 1.6.2.2.2.1 | Analizar los errores leves para observar que alguna combinación de estos no cause problemas graves | 0.5d | 2019-04-22 16:14 | 2019-04-23 11:14 | 381 | Programador Senior |
| 384 | 1.5.2.3 | **Corrección de errores** | 2.53d | 2019-04-23 11:14 | 2019-04-25 16:29 | 378 |  |
| 385 | 1.5.2.3.1 | **Depuración de errores** | 2.03d | 2019-04-23 11:14 | 2019-04-25 11:29 |  |  |
| 386 | 1.6.2.3.1.1 | Arreglar todos los errores graves | 2d | 2019-04-23 11:29 | 2019-04-25 11:29 | 30 | Programador Senior |
| 387 | 1.6.2.3.1.2 | Arreglar los errores leves que causen errores graves como conjunto | 2d | 2019-04-23 11:14 | 2019-04-25 11:14 |  | Programador Junior1; Programador Junior2 |
| 388 | 1.5.2.3.2 | **Verificación de corrección** | 0.5d | 2019-04-25 11:29 | 2019-04-25 16:29 | 385 |  |
| 389 | 1.6.2.3.2.1 | Comprobar que las correcciones han sido realizadas sin causar mas errores | 0.5d | 2019-04-25 11:29 | 2019-04-25 16:29 |  | Analista-Programador |

| ID | WBS | Task | Duration | Start | Finish | Predecessors | Resources |
| --- | --- | --- | --- | --- | --- | --- | --- |
| 390 | 1.5.2.4 | **Verificación de terminación** | 2d | 2019-04-25 16:29 | 2019-04-29 16:29 | 384 |  |
| 391 | 1.5.2.4.1 | **Revisión de listado de errores** | 1.5d | 2019-04-25 16:29 | 2019-04-29 11:29 |  |  |
| 392 | 1.6.2.4.1.1 | Revisar el listado de errores e informe de correcciones | 1.5d | 2019-04-25 16:29 | 2019-04-29 11:29 |  | Analista-Programador |
| 393 | 1.5.2.4.2 | **Aprobación formal de finalización** | 0.5d | 2019-04-29 11:29 | 2019-04-29 16:29 | 391 |  |
| 394 | 1.6.2.4.2.1 | Reunirse con el encargado para formalizar la validación e informar del progreso semanal | 0.5d | 2019-04-29 11:29 | 2019-04-29 16:29 |  | Analista-Programador; Director de proyecto |
| 395 | 1.5.3 | **Análisis de errores y evaluación** | 2.74d | 2019-04-29 16:29 | 2019-05-02 14:24 | 367 |  |
| 396 | 1.5.3.1 | **Creación de documento de errores** | 1d | 2019-04-30 09:14 | 2019-05-01 09:14 |  |  |
| 397 | 1.6.3.1.1 | Redactar documento de errores | 1d | 2019-04-30 09:14 | 2019-05-01 09:14 | 31 | Analista-Programador |
| 398 | 1.5.3.2 | **Catalogación de errores** | 1d | 2019-04-29 16:29 | 2019-04-30 16:29 |  |  |
| 399 | 1.6.3.2.1 | Catalogar errores basandose en el análisis realizado en la ejecución de pruebas | 1d | 2019-04-29 16:29 | 2019-04-30 16:29 | 382, 379 | Analista-Programador |
| 400 | 1.5.3.3 | **Realización de análisis estadísticos** | 1.5d | 2019-05-01 09:14 | 2019-05-02 14:14 | 398, 396 |  |
| 401 | 1.6.3.3.1 | Realizar análisis estadístico de errores | 1d | 2019-05-01 09:14 | 2019-05-02 09:14 |  | Analista-Diseñador; Analista-Programador |
| 402 | 1.6.3.3.2 | Redactar informe estadístico | 0.5d | 2019-05-02 09:14 | 2019-05-02 14:14 | 401 | Analista-Diseñador; Analista-Programador |
| 403 | 1.5.3.4 | **Adición al archivo de proyectos de la empresa** | 0.02d | 2019-05-02 14:14 | 2019-05-02 14:24 | 400, 398, 396 |  |
| 404 | 1.6.3.4.1 | Añadir los documentos creados al archivo de la empresa | 0.02d | 2019-05-02 14:14 | 2019-05-02 14:24 |  | Director de proyecto |
